# New Business

Schedule from MS Project, 2025-09-09 to 2025-12-01.

## Calendars

- Standard: Mon-Fri 08:00-12:00, 13:00-17:00; Sat-Sun off.

## Resources

| Resource |
| --- |
| Business Advisor |
| Peers |
| Lawyer |
| Government Agency |
| Manager |
| Owners |
| Gary |
| Banker |
| Information Services |
| Dario |
| Equipo |
| Contable |
| Colegas |
| Camila |
| Director del banco |
| Autoridad gubernamental |
| Servicios de información |
| Propietario |

## Schedule

| ID | WBS | Task | Type | Duration | Start | Finish | Predecessors | Total slack | Free slack | Constraint | Resources | Work |
| --- | --- | --- | --- | --- | --- | --- | --- | --- | --- | --- | --- | --- |
| 1 | 1 | Inicio del Poryecto | milestone | 0d | 2025-09-09 | 2025-09-09 |  | 59d |  | finish no earlier than 2025-09-09 |  |  |
| 2 | 2 | **Fase 1** |  | 20d | 2025-09-09 | 2025-10-06 |  |  |  |  |  | 160h |
| 3 | 2.1 | **Sprint 1** |  | 10d | 2025-09-09 | 2025-09-22 |  |  |  |  |  | 8h |
| 4 | 2.1.1 | Definir y validar el alcance final del proyecto. |  | 1d | 2025-09-09 | 2025-09-09 |  | 1d | 0d |  | Equipo | 8h |
| 5 | 2.2 | Realizar el levantamiento de requerimientos funcionales y no funcionales (casos de uso, historias de usuario). |  | 2d | 2025-09-10 | 2025-09-11 | 4 | 1d | 0d |  | Equipo | 16h |
| 6 | 2.3 | Diseñar la arquitectura del sistema y el diagrama de base de datos (primera versión). |  | 1d | 2025-09-12 | 2025-09-12 | 5 | 1d | 0d |  | Equipo | 8h |
| 7 | 2.4 | Elaborar el primer borrador del modelo de documentación y las plantillas base. |  | 2d | 2025-09-15 | 2025-09-16 | 6 | 1d | 0d |  | Equipo | 16h |
| 8 | 2.5 | Documento de Alcance y Requerimientos. |  | 1d | 2025-09-17 | 2025-09-17 | 7 | 1d | 0d |  | Equipo | 8h |
| 9 | 2.6 | Diagrama de Arquitectura de 3 Capas. |  | 1d | 2025-09-18 | 2025-09-18 | 8 | 1d | 0d |  | Equipo | 8h |
| 10 | 2.7 | Diagrama de Base de Datos. |  | 1d | 2025-09-19 | 2025-09-19 | 9 | 1d | 0d |  | Equipo | 8h |
| 11 | 2.8 | Definición de las plantillas iniciales. |  | 1d | 2025-09-22 | 2025-09-22 | 10 | 1d | 0d |  | Equipo | 8h |
| 12 | 2.9 | **Sprint 2** |  | 10d | 2025-09-23 | 2025-10-06 |  |  |  |  |  | 24h |
| 13 | 2.9.1 | Diseñar el mockup (prototipo) de la interfaz de usuario para el login, dashboard y menú principal. |  | 2d | 2025-09-23 | 2025-09-24 | 11 | 1d | 0d |  | Dario | 16h |
| 14 | 2.9.2 | Implementar el prototipo funcional del módulo de login con roles y autenticación. |  | 1d | 2025-09-25 | 2025-09-25 | 13 | 1d | 0d |  | Gary | 8h |
| 15 | 2.10 | Desarrollar la lógica inicial del módulo de mantenedores para la parametrización de usuarios y roles. |  | 2d | 2025-09-26 | 2025-09-29 | 14 | 1d | 0d |  | Gary | 16h |
| 16 | 2.11 | Configurar la integración con un repositorio de archivos en la nube. |  | 1d | 2025-09-30 | 2025-09-30 | 15 | 1d | 0d |  | Dario | 8h |
| 17 | 2.12 | Mockups de interfaz de usuario (UI/UX). |  | 1d | 2025-10-01 | 2025-10-01 | 16 | 1d | 0d |  | Dario | 8h |
| 18 | 2.13 | Prototipo funcional del login. |  | 1d | 2025-10-02 | 2025-10-02 | 17 | 1d | 0d |  | Gary | 8h |
| 19 | 2.14 | Módulo de mantenedores (versión inicial). |  | 1d | 2025-10-03 | 2025-10-03 | 18 | 1d | 0d |  | Gary | 8h |
| 20 | 2.15 | Conexión exitosa con el repositorio en la nube. |  | 1d | 2025-10-06 | 2025-10-06 | 19 | 1d | 0d |  | Gary | 8h |
| 21 | 3 | **Fase 2** |  | 20d | 2025-10-07 | 2025-11-03 |  |  |  |  |  | 328h |
| 22 | 3.1 | **Sprint 3** |  | 10d | 2025-10-07 | 2025-10-20 |  |  |  |  |  | 8h |
| 23 | 3.1.1 | Implementar el módulo de gestión de documentos (carga de archivos, previsualización y descarga). |  | 1d | 2025-10-07 | 2025-10-07 | 20 | 1d | 0d |  | Equipo | 8h |
| 24 | 3.2 | Configurar el flujo de trabajo de revisión y aprobación de documentos. |  | 2d | 2025-10-08 | 2025-10-09 | 23 | 1d | 0d |  | Equipo | 16h |
| 25 | 3.3 | Desarrollar la funcionalidad de historial de versiones para registrar los cambios y sus autores. |  | 2d | 2025-10-10 | 2025-10-13 | 24 | 1d | 0d |  | Equipo | 16h |
| 26 | 3.4 | Implementar una barra de progreso que muestre el avance de la documentación. |  | 1d | 2025-10-14 | 2025-10-14 | 25 | 1d | 0d |  | Equipo | 8h |
| 27 | 3.5 | Entregables: |  | 1d | 2025-10-15 | 2025-10-15 | 26 | 1d | 0d |  | Equipo | 8h |
| 28 | 3.6 | Módulo de gestión de documentos. |  | 1d | 2025-10-16 | 2025-10-16 | 27 | 1d | 0d |  | Equipo | 8h |
| 29 | 3.7 | Funcionalidad de historial de versiones. |  | 1d | 2025-10-17 | 2025-10-17 | 28 | 1d | 0d |  | Camila | 8h |
| 30 | 3.8 | Barra de avance documental. |  | 1d | 2025-10-20 | 2025-10-20 | 29 | 1d | 0d |  | Camila | 8h |

| ID | WBS | Task | Duration | Start | Finish | Predecessors | Total slack | Free slack | Resources | Work |
| --- | --- | --- | --- | --- | --- | --- | --- | --- | --- | --- |
| 31 | 3.9 | **Sprint 4** | 10d | 2025-10-21 | 2025-11-03 |  |  |  |  | 8h |
| 32 | 3.9.1 | Configurar las políticas de seguridad de la infraestructura (IAM, WAF, HTTPS/TLS). | 1d | 2025-10-21 | 2025-10-21 | 30 | 1d | 0d | Gary | 8h |
| 33 | 3.10 | Implementar el registro de logs detallados para auditoría y trazabilidad. | 1d | 2025-10-22 | 2025-10-22 | 32 | 1d | 0d | Gary | 8h |
| 34 | 3.11 | Realizar pruebas unitarias y de integración para los módulos desarrollados. | 1d | 2025-10-23 | 2025-10-23 | 33 | 1d | 0d | Gary | 8h |
| 35 | 3.12 | Optimizar el rendimiento de las funcionalidades clave. | 1d | 2025-10-24 | 2025-10-24 | 34 | 1d | 0d | Gary | 8h |
| 36 | 3.13 | Informe de configuración de seguridad. | 2d | 2025-10-27 | 2025-10-28 | 35 | 1d | 0d | Camila | 16h |
| 37 | 3.14 | Logs de auditoría funcionales. | 2d | 2025-10-29 | 2025-10-30 | 36 | 1d | 0d | Camila | 16h |
| 38 | 3.15 | Informe de resultados de pruebas. | 1d | 2025-10-31 | 2025-10-31 | 37 | 1d |  | Camila | 8h |
| 39 | 3.16 | **Fase 3** | 20d | 2025-10-07 | 2025-11-03 |  |  |  |  | 176h |
| 40 | 3.16.1 | **Sprint 5** | 10d | 2025-11-04 | 2025-11-17 |  |  |  |  | 16h |
| 41 | 3.16.1.1 | Realizar un caso piloto en el contexto de DUOC UC, aplicando el modelo a un proyecto de software ficticio. | 2d | 2025-11-04 | 2025-11-05 | 38 | 0d |  | Equipo | 16h |
| 42 | 3.16.2 | Evaluar la usabilidad y la experiencia de usuario con diferentes roles (estudiantes y profesores simulados). | 2d | 2025-11-06 | 2025-11-07 | 41 | 0d |  | Dario | 16h |
| 43 | 3.16.3 | Recopilar feedback para identificar mejoras en el sistema. | 1d | 2025-11-10 | 2025-11-10 | 42 | 0d |  | Camila | 8h |
| 44 | 3.16.4 | Realizar ajustes finales en la interfaz de usuario y los permisos. | 1d | 2025-11-11 | 2025-11-11 | 43 | 0d |  | Gary | 8h |
| 45 | 3.16.5 | Informe de resultados de validación. | 1d | 2025-11-12 | 2025-11-12 | 44 | 0d |  | Camila | 8h |
| 46 | 3.16.6 | Lista de mejoras identificadas. | 1d | 2025-11-13 | 2025-11-13 | 45 | 0d |  | Camila | 8h |
| 47 | 3.16.7 | Sistema refinado y ajustado | 2d | 2025-11-14 | 2025-11-17 | 46 | 0d |  | Gary | 16h |
| 48 | 3.16.8 | **Sprint 6** | 10d | 2025-11-18 | 2025-11-30 |  |  |  |  | 32h |
| 49 | 3.16.8.1 | Realizar pruebas integrales para asegurar el correcto funcionamiento del sistema. | 2d | 2025-11-18 | 2025-11-19 | 47 | 0d |  | Dario | 16h |
| 50 | 3.16.8.2 | Elaborar la documentación técnica del proyecto (manual de usuario, manual de instalación, arquitectura final). | 2d | 2025-11-20 | 2025-11-21 | 49 | 0d |  | Camila | 16h |
| 51 | 3.16.9 | Preparar el informe final y la presentación para la defensa del proyecto Capstone. | 2d | 2025-11-24 | 2025-11-25 | 50 | 0d |  | Equipo | 16h |
| 52 | 3.16.10 | Organizar el repositorio del proyecto en GitHub. | 2d | 2025-11-26 | 2025-11-27 | 51 | 0d |  | Equipo | 16h |
| 53 | 3.16.11 | Sistema funcional y listo para la defensa. | 2d | 2025-11-28 | 2025-12-01 | 52 | 0d |  | Equipo | 16h |
| 54 | 3.16.12 | Documentación técnica completa. | 2d | 2025-11-28 | 2025-12-01 | 52 | 0d |  | Equipo | 16h |
| 55 | 3.16.13 | Presentación e Informe Final. | 2d | 2025-11-28 | 2025-12-01 | 52 | 0d |  |  |  |
